# Proyecto ATP

Schedule from MS Project, 2025-08-11 to 2025-11-18, costs in $, A marks actual dates.

## Calendars

- Estándar: Mon-Fri 09:00-13:00, 15:00-19:00; Sat-Sun off. Exceptions (off unless hours are given): 2025-09-18 to 2025-09-19 (feriado, recurring).

## Resources

| Resource | Rate |
| --- | --- |
| Scrum master | 12000 |
| Programador front | 11000 |
| Programador back | 11000 |
| Gestión | 8000 |

## Schedule

| ID | WBS | Task | Duration | Start | Finish | Predecessors | Complete | Baseline start | Baseline finish | Baseline duration | Resources | Work | Actual work | Cost | Baseline cost | Actual cost |
| --- | --- | --- | --- | --- | --- | --- | --- | --- | --- | --- | --- | --- | --- | --- | --- | --- |
| 1 | 1 | **MyGoalFinance** | 70d | 2025-08-11 A | 2025-11-18 A |  | 100% | 2025-08-11 | 2025-11-13 | 67d |  | 1096h | 1096h | 11,760,000 | 11,584,000 | 11,760,000 |
| 2 | 1.1 | **Inicio y planificación** | 10d | 2025-08-11 A | 2025-08-22 A |  | 100% | 2025-08-11 | 2025-08-22 | 10d |  | 152h | 152h | 1,608,000 | 1,608,000 | 1,608,000 |
| 3 | 1.1.1 | Definir el backlog del producto | 3d | 2025-08-11 A | 2025-08-13 A |  | 100% | 2025-08-11 | 2025-08-13 | 3d | Gestión; Scrum master | 48h | 48h | 480,000 | 480,000 | 480,000 |
| 4 | 1.1.2 | Levantamiento de requerimientos principales | 3d | 2025-08-14 A | 2025-08-18 A | 3 | 100% | 2025-08-14 | 2025-08-18 | 3d | Gestión; Scrum master; Programador front | 72h | 72h | 744,000 | 744,000 | 744,000 |
| 5 | 1.1.3 | Asignación de roles del equipo | 2d | 2025-08-19 A | 2025-08-20 A | 4 | 100% | 2025-08-19 | 2025-08-20 | 2d | Scrum master | 16h | 16h | 192,000 | 192,000 | 192,000 |
| 6 | 1.1.4 | Configuración de entornos | 2d | 2025-08-21 A | 2025-08-22 A | 5 | 100% | 2025-08-21 | 2025-08-22 | 2d | Scrum master | 16h | 16h | 192,000 | 192,000 | 192,000 |
| 7 | 1.2 | **Diseño** | 9d | 2025-08-25 A | 2025-09-04 A | 2 | 100% | 2025-08-25 | 2025-09-04 | 9d |  | 136h | 136h | 1,392,000 | 1,392,000 | 1,392,000 |
| 8 | 1.2.1 | Elaboración de diagrama | 2d | 2025-08-25 A | 2025-08-26 A |  | 100% | 2025-08-25 | 2025-08-26 | 2d | Gestión; Scrum master | 32h | 32h | 320,000 | 320,000 | 320,000 |
| 9 | 1.2.2 | Definir modelo de datos inicial | 3d | 2025-08-27 A | 2025-08-29 A | 8 | 100% | 2025-08-27 | 2025-08-29 | 3d | Programador back; Programador front; Scrum master | 72h | 72h | 816,000 | 816,000 | 816,000 |
| 10 | 1.2.3 | Mockups de la interfaz de usuario | 2d | 2025-09-01 A | 2025-09-02 A | 9 | 100% | 2025-09-01 | 2025-09-02 | 2d | Gestión | 16h | 16h | 128,000 | 128,000 | 128,000 |
| 11 | 1.2.4 | Historias de usuarios | 2d | 2025-09-03 A | 2025-09-04 A | 10 | 100% | 2025-09-03 | 2025-09-04 | 2d | Gestión | 16h | 16h | 128,000 | 128,000 | 128,000 |
| 12 | 1.3 | **Desarrollo** | 21d | 2025-09-05 A | 2025-10-07 A | 7 | 100% | 2025-09-05 | 2025-10-02 | 18d |  | 368h | 368h | 4,104,000 | 3,928,000 | 4,104,000 |
| 13 | 1.3.1 | Implementar infraestructura | 7d | 2025-09-05 A | 2025-09-15 A |  | 100% | 2025-09-05 | 2025-09-15 | 7d | Programador back; Programador front; Scrum master | 168h | 168h | 1,904,000 | 1,904,000 | 1,904,000 |
| 14 | 1.3.2 | Configuración del Chatbot | 1d | 2025-09-16 A | 2025-09-16 A | 13 | 100% | 2025-09-16 | 2025-09-16 | 1d | Programador back | 8h | 8h | 88,000 | 88,000 | 88,000 |
| 15 | 1.3.3 | Base de datos | 2d | 2025-09-17 A | 2025-09-22 A | 14 | 100% | 2025-09-17 | 2025-09-18 | 2d | Programador back | 16h | 16h | 176,000 | 176,000 | 176,000 |
| 16 | 1.3.4 | Prototipo navegable | 11d | 2025-09-23 A | 2025-10-07 A | 15 | 100% | 2025-09-19 | 2025-10-02 | 10d | Programador back; Programador front | 176h | 176h | 1,936,000 | 1,760,000 | 1,936,000 |
| 17 | 1.4 | **Funcionalidades** | 10d | 2025-10-08 A | 2025-10-21 A | 12 | 100% | 2025-10-03 | 2025-10-16 | 10d |  | 152h | 152h | 1,600,000 | 1,600,000 | 1,600,000 |
| 18 | 1.4.1 | Desarrollo de interacción del Chatbot | 3d | 2025-10-08 A | 2025-10-10 A |  | 100% | 2025-10-03 | 2025-10-07 | 3d | Programador back; Programador front | 48h | 48h | 528,000 | 528,000 | 528,000 |
| 19 | 1.4.2 | Integración de contenidos financieros | 3d | 2025-10-13 A | 2025-10-15 A | 18 | 100% | 2025-10-08 | 2025-10-10 | 3d | Gestión; Programador back; Programador front | 72h | 72h | 720,000 | 720,000 | 720,000 |
| 20 | 1.4.3 | Implementación interfaz inicial | 2d | 2025-10-16 A | 2025-10-17 A | 19 | 100% | 2025-10-13 | 2025-10-14 | 2d | Programador front | 16h | 16h | 176,000 | 176,000 | 176,000 |
| 21 | 1.4.4 | Pruebas unitarias tempranas | 2d | 2025-10-20 A | 2025-10-21 A | 20 | 100% | 2025-10-15 | 2025-10-16 | 2d | Programador front | 16h | 16h | 176,000 | 176,000 | 176,000 |
| 22 | 1.5 | **Integración y mejoras** | 10d | 2025-10-22 A | 2025-11-04 A | 17 | 100% | 2025-10-17 | 2025-10-30 | 10d |  | 112h | 112h | 1,248,000 | 1,248,000 | 1,248,000 |
| 23 | 1.5.1 | Mejorar UX | 3d | 2025-10-22 A | 2025-10-24 A |  | 100% | 2025-10-17 | 2025-10-21 | 3d | Programador front | 24h | 24h | 264,000 | 264,000 | 264,000 |
| 24 | 1.5.2 | Agregar funcionalidad extra | 2d | 2025-10-27 A | 2025-10-28 A | 23 | 100% | 2025-10-22 | 2025-10-23 | 2d | Programador back; Programador front | 32h | 32h | 352,000 | 352,000 | 352,000 |
| 25 | 1.5.3 | Optimizar respuestas del chatbot | 3d | 2025-10-29 A | 2025-10-31 A | 24 | 100% | 2025-10-24 | 2025-10-28 | 3d | Programador back | 24h | 24h | 264,000 | 264,000 | 264,000 |
| 26 | 1.5.4 | Pruebas de integración y feedback de los usuarios | 2d | 2025-11-03 A | 2025-11-04 A | 25 | 100% | 2025-10-29 | 2025-10-30 | 2d | Programador front; Scrum master | 32h | 32h | 368,000 | 368,000 | 368,000 |

| ID | WBS | Task | Duration | Start | Finish | Predecessors | Complete | Baseline start | Baseline finish | Baseline duration | Resources | Work | Actual work | Cost | Baseline cost | Actual cost |
| --- | --- | --- | --- | --- | --- | --- | --- | --- | --- | --- | --- | --- | --- | --- | --- | --- |
| 27 | 1.6 | **Cierre y entrega** | 10d | 2025-11-05 A | 2025-11-18 A | 22 | 100% | 2025-10-31 | 2025-11-13 | 10d |  | 176h | 176h | 1,808,000 | 1,808,000 | 1,808,000 |
| 28 | 1.6.1 | Ajustes finales y corrección de errores | 4d | 2025-11-05 A | 2025-11-10 A |  | 100% | 2025-10-31 | 2025-11-05 | 4d | Gestión; Scrum master | 64h | 64h | 640,000 | 640,000 | 640,000 |
| 29 | 1.6.2 | Pruebas finales | 2d | 2025-11-11 A | 2025-11-12 A | 28 | 100% | 2025-11-06 | 2025-11-07 | 2d | Programador back; Programador front | 32h | 32h | 352,000 | 352,000 | 352,000 |
| 30 | 1.6.3 | Documentación del proyecto | 3d | 2025-11-13 A | 2025-11-17 A | 29 | 100% | 2025-11-10 | 2025-11-12 | 3d | Scrum master; Gestión | 48h | 48h | 480,000 | 480,000 | 480,000 |
| 31 | 1.6.4 | Preparación para presentación final | 1d | 2025-11-18 A | 2025-11-18 A | 30 | 100% | 2025-11-13 | 2025-11-13 | 1d | Gestión; Programador back; Programador front; Scrum master | 32h | 32h | 336,000 | 336,000 | 336,000 |
